# 设备借测+采购

Schedule from a web Gantt chart, 2025-09-04 to 2025-09-29.
Saturdays and Sundays are off
硬件设备的选型和借测

## Schedule

| ID | WBS | Task | Duration | Start | Finish | Complete | inPeople |
| --- | --- | --- | --- | --- | --- | --- | --- |
| 2 | 1 | 方案可行性和风险点评估 | 3d | 2025-09-04 | 2025-09-08 | 100% | 颜函、杨吉彬、刘维平、外协机械和电气工程师 |
| 3 | 2 | 法奥FRC30WML借测 | 1d | 2025-09-04 | 2025-09-04 | 100% | 颜函、杨吉彬 |
| 4 | 3 | 220-48转换器 | 1d | 2025-09-04 | 2025-09-04 | 50% | 颜函、杨吉彬 |
| 5 | 4 | 机械臂桌面固定铝合金板 | 1d | 2025-09-04 | 2025-09-04 | 100% | 杨吉彬 |
| 6 | 5 | 丝攻扳手 | 1d | 2025-09-04 | 2025-09-04 | 100% | 杨吉彬 |
| 7 | 6 | 机械臂机械狗固定铝合金板下单 | 1d | 2025-09-04 | 2025-09-04 | 100% | 杨吉彬 |
| 8 | 7 | 电源插头带线 | 3d | 2025-09-04 | 2025-09-08 | 100% | 颜函、杨吉彬 |
| 9 | 8 | ZIVID 70相机借测 | 3d | 2025-09-04 | 2025-09-08 | 100% | 杨吉彬 |
| 10 | 9 | 机械狗+机械臂+相机整体结构设计 | 8d | 2025-09-04 | 2025-09-15 | 80% | 杨吉彬，外协机械 |
| 11 | 10 | 机器人底座固定件设计下单 | 3d | 2025-09-08 | 2025-09-10 | 100% | 杨吉彬 |
| 12 | 11 | 机器人建图、定位和导航功能 | 16d | 2025-09-08 | 2025-09-29 |  | 杨吉彬、田庆忠 |
| 13 | 12 | 视觉巡检算法框架搭建 | 16d | 2025-09-08 | 2025-09-29 |  | 杨吉彬、田庆忠 |
| 14 | 13 | web巡检结果可视化界面制作 | 16d | 2025-09-08 | 2025-09-29 | 10% | 杨吉彬、田庆忠 |
| 15 | 14 | 机械臂上电示教 | 2d | 2025-09-12 | 2025-09-15 |  | 杨吉彬 |
| 16 | 15 | 相机上电调试 | 2d | 2025-09-12 | 2025-09-15 | 100% | 杨吉彬 |
| 17 | 16 | 软件开发框架和平台讨论会议 | 2d | 2025-09-11 | 2025-09-12 | 100% | 杨吉彬、田庆忠 |
| 18 | 17 | 机械狗身上电脑选型和下单 | 3d | 2025-09-10 | 2025-09-12 | 50% | 杨吉彬 |
| 19 | 18 | 机械狗身上硬件的安装设计 | 9d | 2025-09-10 | 2025-09-22 | 20% | 杨吉彬 |
| 20 | 19 | 电气图纸和BOM | 8d | 2025-09-09 | 2025-09-18 | 30% | 杨吉彬 |
| 21 | 20 | 电气BOM下单 | 9d | 2025-09-10 | 2025-09-22 | 20% | 杨吉彬 |

Notes:
- 2: 评估点如下：1 机械臂搭载上去之后整体静态下重心位置偏移 2 功耗评估 3 风险点评估
- 3: 已确认好型号，等对方制作借测合同，我方盖章，对方发货
- 4: 转换器购买链接：https://item.jd.com/10161353345470.html
- 5: https://item.jd.com/10175373094091.html#switch-sku
- 6: https://item.jd.com/10040552960593.html#switch-sku
- 7: https://item.jd.com/10175373094090.html#switch-sku
- 8: 插头购买链接： https://item.jd.com/100020410039.html#switch-sku
- 9: 已确认好型号，在等对方发货
- 10: 整体结构图已经画出，在等待电气件选型完成后，整体考虑布局。
- 11: 选好了型号下单
- 12: 开发中
- 13: 开发中
- 14: 开发中
- 15: 部分需要的线材采购中
- 16: 相机SDK能正常采集图像
- 17: 确定开发的语言、平台以及协议
- 18: 需要跟机械讨论后明确尺寸
- 19: 开发中
- 20: 设计中
- 21: 部分电气件先下单
